Task	Priority	Owner	Status	Start date	End date	Milestone	Deliverable	Notes
[CMS] Chuẩn hóa danh mục 3 cấp, mức giá, nhãn Sale và Bestseller	P0	Content / CMS	Completed	23/09/2026	24/09/2026	CMS & Dữ liệu	File dữ liệu 100+ sản phẩm chuẩn hóa	Phân loại sẵn toàn bộ nhãn Sale và Bestseller
[CMS] Nhập dữ liệu danh mục, thương hiệu, sản phẩm lên hệ thống website	P0	Wix Dev / CMS	Completed	24/09/2026	25/09/2026	CMS & Dữ liệu	Dữ liệu hiển thị trực tiếp trên CMS	Sẵn sàng liên kết vào các trang động
[CMS] Xử lý và tải lên bộ thư viện ảnh sản phẩm sắc nét (ảnh chính, ảnh các góc)	P1	Content / Design	In progress	25/09/2026	27/09/2026	CMS & Dữ liệu	Thư viện hình ảnh sắc nét, tối ưu dung lượng	Đảm bảo tốc độ tải trang nhanh mượt
[Header & Footer] Dựng thanh Menu chính kéo thả, ô tìm kiếm nhanh và Chân trang	P1	Wix Dev	In progress	26/09/2026	27/09/2026	0. Khung dùng chung	Khung Header & Footer dùng chung toàn site	[Kéo thả] Tích hợp mạng xã hội & gian hàng chính hãng
[Trang Chủ] Dựng khối Banner sự kiện & 2 Section Carousel danh mục/bestseller	P0	Wix Dev / UI	In progress	27/09/2026	29/09/2026	1. Trang Chủ	Giao diện Trang Chủ hoàn chỉnh	[Kéo thả + Section Custom Element] Nổi bật 3 thương hiệu
[Trang Sản Phẩm] Dựng Banner kéo thả & Section danh mục con, bộ lọc giá/hãng, lưới 32 SP	P0	Wix Dev	Not started	29/09/2026	02/10/2026	2. Trang Sản Phẩm	Trang Danh mục & Lưới sản phẩm	[Kéo thả + Section Custom Element] Nút xem thêm 32 SP
[Trang Chi Tiết SP] Dựng khối thông tin & Section gallery ảnh zoom, specs, nút Shopee/TikTok	P0	Wix Dev	Not started	02/10/2026	04/10/2026	3. Trang Chi Tiết SP	Trang Chi Tiết Sản Phẩm (PDP)	[Kéo thả + Section Custom Element] Mua hàng 1-click
[Trang Sale] Dựng Banner ưu đãi kéo thả & Section lưới sản phẩm giảm giá, nhãn Sale đỏ	P1	Wix Dev	Not started	04/10/2026	06/10/2026	4. Trang Sale	Trang Khuyến Mãi (Sale)	[Kéo thả + Section Custom Element] Tự động cập nhật giảm giá
[Trang Thương Hiệu] Dựng Banner giới thiệu & Section dải 3 thương hiệu kèm lưới sản phẩm	P1	Wix Dev	Not started	06/10/2026	07/10/2026	5. Trang Thương Hiệu	Trang Tổng hợp 3 Thương hiệu	[Kéo thả + Section Custom Element] ZWILLING, MIYABI, STAUB
[Trang Thương Hiệu Detail] Dựng câu chuyện hãng & Section dải Series, lưới sản phẩm theo hãng	P1	Wix Dev / Content	Not started	07/10/2026	09/10/2026	6. Trang Brand Detail	Trang riêng từng thương hiệu	[Kéo thả + Section Custom Element] Công nghệ & Series độc quyền
[Trang Bestseller] Dựng Banner thông điệp & Section lưới sản phẩm bán chạy kèm huy hiệu	P1	Wix Dev	Not started	09/10/2026	10/10/2026	7. Trang Bestseller	Trang Sản Phẩm Bán Chạy	[Kéo thả + Section Custom Element] Huy hiệu Bestseller
[Trang Về Chúng Tôi] Dựng bố cục dòng thời gian di sản 290 năm lịch sử (từ 1731) và tầm nhìn	P1	UI/UX / Content	Not started	10/10/2026	12/10/2026	8. Trang Về Chúng Tôi	Trang Về Chúng Tôi hoàn chỉnh	[100% Kéo thả thuần túy] Bố cục Timeline trang trọng
[Trang Về Chúng Tôi Detail] Dựng các bài viết chuyên đề công nghệ rèn Đức, Nhật, Pháp	P2	UI/UX / Content	Not started	12/10/2026	13/10/2026	9. Trang About Detail	Trang Chuyên Đề Công Nghệ	[100% Kéo thả thuần túy] Thép FRIODUR, rèn Seki, men gang
[Trang Liên Lạc] Dựng Form gửi thư tư vấn, bản đồ Showroom, Hotline và mạng lưới đối tác	P1	Wix Dev	Not started	13/10/2026	14/10/2026	10. Trang Liên Lạc	Trang Liên Hệ hoàn chỉnh	[100% Kéo thả thuần túy] Tiếp nhận yêu cầu & chỉ đường
[Toàn Site] Cài đặt và kiểm tra tính năng chuyển đổi Song ngữ (Tiếng Việt - Tiếng Anh)	P0	Wix Dev / Content	Not started	14/10/2026	16/10/2026	Tối ưu toàn site	Toàn bộ 10 trang hỗ trợ song ngữ	Tiếng Việt là mặc định, chuyển đổi ngôn ngữ tức thì
[Toàn Site] Tối ưu hiển thị Điện thoại (Mobile), Máy tính bảng và tốc độ tải trang dưới 1.5s	P0	Frontend / QA	Not started	16/10/2026	17/10/2026	Tối ưu toàn site	Giao diện Mobile mượt mà, tải nhanh	Thao tác vuốt chạm cảm ứng nhẹ nhàng, không chờ đợi
[Nghiệm Thu] Kiểm thử tổng thể 10 trang: Kiểm tra liên kết, nút mua hàng, bộ lọc và form	P0	QA / Tester	Not started	17/10/2026	19/10/2026	Nghiệm thu & Ra mắt	Báo cáo kiểm thử chất lượng toàn diện	Đảm bảo 100% không có link hỏng hay lỗi hiển thị
[Ra Mắt] Khách hàng nghiệm thu (UAT), trỏ tên miền chính thức và bàn giao quản trị	P0	PM / Khách hàng	Not started	19/10/2026	20/10/2026	Nghiệm thu & Ra mắt	Website chính thức hoạt động (Go-Live)	Bàn giao tài liệu hướng dẫn quản trị sản phẩm
